# temp

Schedule from MS Project, 2024-02-21 to 2024-04-24, costs in ₫, A marks actual dates.

## Calendars

- Standard: Mon-Fri 08:00-12:00, 13:00-17:00; Sat-Sun off. Exceptions (off unless hours are given): 2024-04-18 (Giỗ Tỗ Hùng Vương).

## Resources

| Resource | Group | Rate |
| --- | --- | --- |
| Nguyễn Ngọc Cảnh Phong - Quản Lý | Quản Lý | 100000 |
| Trần Văn Huy - Lập Trình Viên 1 | Lập Trình | 40000 |
| Hoàng Thanh Tùng- Kiểm Thử Viên 1 | Kiểm Thử | 50000 |
| Trần Văn Huy - Kĩ Thuật Viên | Kĩ Thuật | 50000 |
| Đỗ Thị Diệu Ái - Phân Tích Viên 2 | Phân Tích | 55000 |
| Hoàng Thị Kiều Oanh - Thiết Kế Giao Diện 2 | Giao Diện | 40000 |
| Nguyễn Ngọc Cảnh Phong - Lập Trình Viên 2 | Lập Trình | 40000 |
| Hoàng Thanh Tùng - Phân Tích Viên 1 | Phân Tích | 55000 |
| Lê Thị Bảo Trâm - Thiết Kế Giao Diện 1 | Giao Diện | 40000 |
| Nguyễn Thị Minh Thư- Kiểm Thử Viên 2 | Kiểm Thử | 40000 |
| Nguyễn Ngọc Cảnh Phong - Thiết Kế Dữ Liệu 1 | Dữ Liệu | 70000 |
| Đỗ Thị Diệu Ái - Thiết Kế Dữ Liệu 2 | Dữ Liệu | 70000 |
| Hoàng Thị Kiều Oanh - Phân Tích Viên 3 | Phân Tích | 55000 |
| Nguyễn Thị Minh Thư - Thiết Kế Dữ Liệu 3 | Dữ Liệu | 70000 |

## Schedule

| ID | WBS | Task | Type | Duration | Start | Finish | Predecessors | Complete | Remaining | Total slack | Free slack | Constraint | Resources | Work | Actual work | Cost | Actual cost |
| --- | --- | --- | --- | --- | --- | --- | --- | --- | --- | --- | --- | --- | --- | --- | --- | --- | --- |
| 1 | 1 | **XÂY DỰNG HỆ THỐNG QUẢN LÝ KẾT NỐI VÀ CUNG CẤP GIA SƯ TP-HUẾ** |  | 45d | 2024-02-21 A | 2024-04-24 |  | 5% | 42.57d | 0d |  |  |  | 472h | 8h | 23,280,000 | 800,000 |
| 2 | 1.1 | Bản kế hoạch dự án |  | 1d | 2024-02-21 A | 2024-02-21 A |  | 100% |  |  |  | finish no earlier than 2024-02-21 | Nguyễn Ngọc Cảnh Phong - Quản Lý | 8h | 8h | 800,000 | 800,000 |
| 3 | 1.2 | Thời gian phê duyệt dự án |  | 1d | 2024-02-22 A | 2024-02-22 A | 2 | 100% |  |  |  | start no earlier than 2024-02-22 |  |  |  |  |  |
| 4 | 1.3 | **Phân Tích** |  | 9d | 2024-02-21 | 2024-03-05 |  |  |  | 9d |  |  |  | 136h |  | 7,840,000 |  |
| 5 | 1.3.1 | Thu Thập, Phân Tích Nhu Cầu Khách Hàng |  | 2d | 2024-02-21 | 2024-02-22 |  |  |  | 5d | 0d |  | Hoàng Thanh Tùng - Phân Tích Viên 1; Đỗ Thị Diệu Ái - Phân Tích Viên 2 | 32h |  | 1,760,000 |  |
| 6 | 1.3.2 | Lên Ý Tưởng, Phân Tích Thông Số Kĩ Thuật |  | 4d | 2024-02-23 | 2024-02-28 | 5 |  |  | 5d | 0d |  | Hoàng Thanh Tùng - Phân Tích Viên 1; Đỗ Thị Diệu Ái - Phân Tích Viên 2 | 64h |  | 3,520,000 |  |
| 7 | 1.3.3 | Lập Bảng Báo Cáo, Phản Hồi Khách Hàng |  | 2d | 2024-02-29 | 2024-03-01 | 6 |  |  | 5d | 0d |  | Hoàng Thanh Tùng - Phân Tích Viên 1; Đỗ Thị Diệu Ái - Phân Tích Viên 2 | 32h |  | 1,760,000 |  |
| 8 | 1.3.4 | Chờ Phê Duyệt Để Tiến Hành |  | 1d | 2024-03-04 | 2024-03-04 | 7 |  |  | 5d | 0d |  | Nguyễn Ngọc Cảnh Phong - Quản Lý | 8h |  | 800,000 |  |
| 9 | 1.3.5 | Hoàn Thành Phân Tích | milestone, manual | 0d | 2024-03-05 | 2024-03-05 | 8 |  |  |  |  |  | Đỗ Thị Diệu Ái - Phân Tích Viên 2 |  |  |  |  |
| 10 | 1.4 | **Thiết kế** |  | 8d | 2024-03-05 | 2024-03-15 |  |  |  | 8d |  |  |  | 88h |  | 4,000,000 |  |
| 11 | 1.4.1 | Thiết Kế Cấu Trúc Phần Mềm |  | 2d | 2024-03-05 | 2024-03-06 | 9 |  |  | 5d | 0d |  | Lê Thị Bảo Trâm - Thiết Kế Giao Diện 1 | 16h |  | 640,000 |  |
| 12 | 1.4.2 | Thiết Kế Giao Diện |  | 2d | 2024-03-07 | 2024-03-08 | 11 |  |  | 5d | 0d |  | Hoàng Thị Kiều Oanh - Thiết Kế Giao Diện 2 | 16h |  | 640,000 |  |
| 13 | 1.4.3 | Thiết Kế Cơ Sở Dữ Liệu |  | 2d | 2024-03-11 | 2024-03-12 | 12 |  |  | 5d | 0d |  | Lê Thị Bảo Trâm - Thiết Kế Giao Diện 1; Hoàng Thị Kiều Oanh - Thiết Kế Giao Diện 2 | 32h |  | 1,280,000 |  |
| 14 | 1.4.4 | Thiết Kế Thành Phần Hệ Thống |  | 1d | 2024-03-13 | 2024-03-13 | 13 |  |  | 5d | 0d |  | Lê Thị Bảo Trâm - Thiết Kế Giao Diện 1; Hoàng Thị Kiều Oanh - Thiết Kế Giao Diện 2 | 16h |  | 640,000 |  |
| 15 | 1.4.5 | Chờ Phê Duyệt Để Tiến Hành |  | 1d | 2024-03-14 | 2024-03-14 | 14 |  |  | 5d | 0d |  | Nguyễn Ngọc Cảnh Phong - Quản Lý | 8h |  | 800,000 |  |
| 16 | 1.4.6 | Hoàn Thành Thiết kế | milestone, manual | 0d | 2024-03-15 | 2024-03-15 | 15 |  |  |  |  |  |  |  |  |  |  |
| 17 | 1.5 | **Triển Khai** |  | 37d | 2024-02-21 | 2024-04-12 |  |  |  | 8d |  |  |  | 160h |  | 6,400,000 |  |
| 18 | 1.5.1 | **Triển Khai Logic Hệ Thông** |  | 0d | 2024-03-15 | 2024-03-15 | 16 |  |  | 10d | 0d |  | Trần Văn Huy - Lập Trình Viên 1; Nguyễn Ngọc Cảnh Phong - Lập Trình Viên 2 |  |  |  |  |
| 19 | 1.5.1.1 | **Phân tích thuật toán cho từng chức năng hệ thống** |  | 0d | 2024-03-15 | 2024-03-15 |  |  |  | 10d |  |  |  |  |  |  |  |
| 20 | 1.5.1.1.1 | Phân tích và hiểu rõ các yêu câu của từng chức năng | manual | 1d? | 2024-03-15 | 2024-03-15 |  |  |  |  |  |  |  |  |  |  |  |
| 21 | 1.5.1.1.2 | Xác định thuật toán và quy trình logic xử lý cho mỗi chức năng | manual | 1d? | 2024-03-15 | 2024-03-15 |  |  |  |  |  |  |  |  |  |  |  |
| 22 | 1.5.2 | **Xác định ngôn ngữ lập trình, công cụ phát triển và triển khai thuật toán** |  | 0d | 2024-02-21 | 2024-02-21 |  |  |  | 45d |  |  |  |  |  |  |  |
| 23 | 1.5.2.1 | Chọn ngôn ngữ lập trình, công cụ phát triển và thư viện | manual | 1d? | 2024-03-15 | 2024-03-15 |  |  |  |  |  |  |  |  |  |  |  |
| 24 | 1.5.2.2 | Triển khai xây dựng thuật toán cho các chức năng | manual | 1d? | 2024-02-21 | 2024-02-21 |  |  |  |  |  |  |  |  |  |  |  |
| 25 | 1.5.2.3 | Kiểm tra tính logic xử lý của từng chức năng | manual | 1d? | 2024-02-21 | 2024-02-21 |  |  |  |  |  |  |  |  |  |  |  |

| ID | WBS | Task | Type | Duration | Start | Finish | Predecessors | Total slack | Free slack | Resources | Work | Cost |
| --- | --- | --- | --- | --- | --- | --- | --- | --- | --- | --- | --- | --- |
| 26 | 1.5.3 | **Liên kết các chức năng, logic hóa hệ thống** |  | 0d | 2024-02-21 | 2024-02-21 |  | 45d |  |  |  |  |
| 27 | 1.5.3.1 | Kết nối các chức năng, đảm bảo tính logic hệ thống | manual | 1d? | 2024-02-21 | 2024-02-21 |  |  |  |  |  |  |
| 28 | 1.5.3.2 | Kiểm tra tính logic, hoạt động của hệ thống và đảm bảo không có sự xung đột giữa các chức năng | manual | 1d? | 2024-02-21 | 2024-02-21 |  |  |  |  |  |  |
| 29 | 1.5.4 | **Kiểm tra và xác định tính đúng đắn của thuật toán và quy trình logic của hệ thống** |  | 0d | 2024-02-21 | 2024-02-21 |  | 45d |  |  |  |  |
| 30 | 1.5.4.1 | Thực hiện các bước kiểm tra thuật toán và quy trình logic hệ thống | manual | 1d? | 2024-02-21 | 2024-02-21 |  |  |  |  |  |  |
| 31 | 1.5.4.2 | Gỡ lỗi và sửa các lỗi phát sinh trong quá trình triển khai thuật toán | manual | 1d? | 2024-02-21 | 2024-02-21 |  |  |  |  |  |  |
| 32 | 1.5.5 | **Viết báo cáo thuật toán, logic hệ thống** |  | 0d | 2024-02-21 | 2024-02-21 |  | 45d |  |  |  |  |
| 33 | 1.5.5.1 | Lập báo cáo chi tiết về các thuật toán được dùng trong mỗi chức năng | manual | 1d? | 2024-02-21 | 2024-02-21 |  |  |  |  |  |  |
| 34 | 1.5.5.2 | Lập báo cáo cụ thể logic hoạt động của mỗi chức năng và nguyên lý hoạt động của các chức năng đó | manual | 1d? | 2024-02-21 | 2024-02-21 |  |  |  |  |  |  |
| 35 | 1.5.6 | **Phát Triển Các Thành Phần CSDL** |  | 0d | 2024-03-15 | 2024-03-15 | 18 | 10d | 0d | Trần Văn Huy - Lập Trình Viên 1; Nguyễn Ngọc Cảnh Phong - Lập Trình Viên 2 |  |  |
| 36 | 1.5.6.1 | Thiết kế bảng, thành phần dữ liệu | manual | 1d? | 2024-02-21 | 2024-02-21 |  |  |  |  |  |  |
| 37 | 1.5.7 | Lập Trình Hệ Thống |  | 5d | 2024-03-15 | 2024-03-21 | 35 | 10d | 0d | Trần Văn Huy - Lập Trình Viên 1; Nguyễn Ngọc Cảnh Phong - Lập Trình Viên 2 | 80h | 3,200,000 |
| 38 | 1.5.8 | Đánh Giá Và Tối Ưu Mã Nguồn |  | 5d | 2024-03-22 | 2024-03-28 | 37 | 10d |  | Trần Văn Huy - Lập Trình Viên 1; Nguyễn Ngọc Cảnh Phong - Lập Trình Viên 2 | 80h | 3,200,000 |
| 39 | 1.5.9 | Hoàn Thành Lập Trình | milestone, manual | 0d | 2024-04-12 | 2024-04-12 | 38 |  |  |  |  |  |
| 40 | 1.6 | **Kiểm Thử** |  | 6d | 2024-04-12 | 2024-04-23 |  | 0d |  |  | 64h | 3,440,000 |
| 41 | 1.6.1 | Lập Bảng Kế Hoạch Kiểm Thử |  | 1d | 2024-04-12 | 2024-04-12 | 39 | 0d |  | Hoàng Thanh Tùng- Kiểm Thử Viên 1 | 8h | 400,000 |
| 42 | 1.6.2 | Viết Và Tiến Hành Các Ca Kiểm Thử |  | 1d | 2024-04-15 | 2024-04-15 | 41 | 0d |  | Hoàng Thanh Tùng- Kiểm Thử Viên 1 | 8h | 400,000 |
| 43 | 1.6.3 | Kiểm Thử Toàn Hệ Thống |  | 1d | 2024-04-16 | 2024-04-16 | 42 | 0d |  | Hoàng Thanh Tùng- Kiểm Thử Viên 1 | 8h | 400,000 |
| 44 | 1.6.4 | Xác Định Và Sữa Lỗi |  | 2d | 2024-04-17 | 2024-04-19 | 43 | 0d |  | Hoàng Thanh Tùng- Kiểm Thử Viên 1; Trần Văn Huy - Lập Trình Viên 1 | 32h | 1,440,000 |
| 45 | 1.6.5 | Đánh Giá Cuối Cùng |  | 1d | 2024-04-22 | 2024-04-22 | 44 | 0d |  | Nguyễn Ngọc Cảnh Phong - Quản Lý | 8h | 800,000 |
| 46 | 1.6.6 | Hoàn Thành Kiểm Thử | milestone, manual | 0d | 2024-04-23 | 2024-04-23 | 45 |  |  |  |  |  |
| 47 | 1.7 | **Bàn Giao** |  | 2d | 2024-04-23 | 2024-04-24 |  | 0d |  |  | 16h | 800,000 |
| 48 | 1.7.1 | Cài Đặt Phần Mềm |  | 1d | 2024-04-23 | 2024-04-23 | 46 | 0d |  | Trần Văn Huy - Kĩ Thuật Viên | 8h | 400,000 |
| 49 | 1.7.2 | Hướng Dẫn Phầm Mềm |  | 1d | 2024-04-24 | 2024-04-24 | 48 | 0d |  | Trần Văn Huy - Kĩ Thuật Viên | 8h | 400,000 |
